# EIB - PRI-PLN-0001-r1.00 - AGA Implementation plan-2

Schedule from MS Project, 2018-10-29 to 2019-09-06.

## Calendars

- Standard: Mon-Fri 08:00-12:00, 13:00-17:00; Sat-Sun off.

## Resources

| Resource | Group |
| --- | --- |
| Interface team | Interface team |
| Portal team | Portal team |
| Mobile team |  |
| GED team | GED team |
| Communication team |  |
| Operations |  |
| Database team | Database team |
| Test team | Test team |
| End-Users |  |
| Management |  |
| Infra team |  |
| IAM team |  |
| V |  |
| GED tech team |  |
| GED func team |  |
| PM |  |

## Schedule

| ID | WBS | Task | Duration | Start | Finish | Predecessors | Total slack | Free slack | Resources | Work |
| --- | --- | --- | --- | --- | --- | --- | --- | --- | --- | --- |
| 1 | 1 | **Project management** | 180.88d | 2018-10-29 08:00 | 2019-07-08 16:00 |  | 0d |  |  | 463h |
| 2 | 1.1 | Creation project charter | 4h | 2018-10-29 08:00 | 2018-10-29 12:00 |  | 0d |  | PM | 4h |
| 3 | 1.2 | Creation project plan | 2d | 2018-10-29 13:00 | 2018-10-31 12:00 | 2 | 0d |  | PM | 16h |
| 4 | 1.3 | Presentation kick-off meeting | 2h | 2018-10-31 13:00 | 2018-10-31 15:00 | 3 | 0d |  | PM | 2h |
| 5 | 1.4 | Project follow-up & budget control | 30d | 2018-10-29 13:00 | 2018-12-10 12:00 | 2 | 188.09d | 0d | PM | 240h |
| 6 | 1.5 | Review project planning | 1d | 2018-12-10 13:00 | 2018-12-11 12:00 | 5 | 188.09d |  | PM | 8h |
| 7 | 1.6 | **Approvals and Descision** | 175.12d | 2018-11-05 15:00 | 2019-07-08 16:00 |  | 43.72d |  |  | 19h |
| 8 | 1.6.1 | Send approval confirmation on functional design | 1h | 2018-11-05 15:00 | 2018-11-05 16:00 | 15 | 219.53d |  | PM | 1h |
| 9 | 1.6.2 | Send approval confirmation on technical design | 1h | 2018-11-20 08:00 | 2018-11-20 09:00 | 25 | 207.91d |  | PM | 1h |
| 10 | 1.6.3 | Send approval confirmation on test framework | 1h | 2018-11-22 08:00 | 2018-11-22 09:00 | 133 | 167.28d | 0d | PM | 1h |
| 11 | 1.6.4 | Send Go/No go approval descision for UAT testing | 1d | 2019-06-14 13:00 | 2019-06-17 12:00 | 154, 155, 156 | 59.09d |  | PM | 8h |
| 12 | 1.6.5 | Send Go/No go approval descision for migration | 1d | 2019-07-05 16:00 | 2019-07-08 16:00 | 161 | 0d |  | PM | 8h |
| 14 | 1.7 | **Design** | 13.25d | 2018-10-31 15:00 | 2018-11-19 17:00 |  | 0d |  |  | 174h |
| 15 | 1.7.1 | **Blue-print (Functional design)** | 3d | 2018-10-31 15:00 | 2018-11-05 15:00 |  | 0d |  |  | 68h |
| 16 | 1.7.1.1 | **Workshop - Content Server** | 3d | 2018-10-31 15:00 | 2018-11-05 15:00 |  | 0d |  |  | 24h |
| 17 | 1.7.1.1.1 | Preperation workshop - What's new in CS 16 | 2d | 2018-10-31 15:00 | 2018-11-02 15:00 | 4 | 0d |  | GED team | 16h |
| 18 | 1.7.1.1.2 | Preperation workshop - Current enhanced functionality in DEG | 4h | 2018-11-02 15:00 | 2018-11-05 10:00 | 17 | 0d |  | GED team | 4h |
| 19 | 1.7.1.1.3 | Provide workshop - What's new in CS16 | 4h | 2018-11-05 10:00 | 2018-11-05 15:00 | 18 | 0d |  | GED team | 4h |
| 20 | 1.7.1.2 | **Analysis** | 2.75d | 2018-10-31 15:00 | 2018-11-05 12:00 |  | 218.97d |  | GED team | 44h |
| 21 | 1.7.1.2.1 | Create functional analysis | 4h | 2018-10-31 15:00 | 2018-11-01 10:00 | 4 | 219.78d | 0d | GED team | 4h |
| 22 | 1.7.1.2.2 | Perform functional FIT/GAP analysis | 1d | 2018-11-01 10:00 | 2018-11-02 10:00 | 21 | 219.78d | 0d | GED team | 8h |
| 23 | 1.7.1.2.3 | Presentation of functional analysis | 2h | 2018-11-02 10:00 | 2018-11-02 12:00 | 22 | 219.78d | 0d | GED team | 2h |
| 24 | 1.7.1.2.4 | Sign-off functional design specifications | 1d | 2018-11-02 13:00 | 2018-11-05 12:00 | 23 | 219.78d |  | GED team | 8h |
| 25 | 1.7.2 | **Technical design** | 13.25d | 2018-10-31 15:00 | 2018-11-19 17:00 |  | 94.38d | 0d |  | 106h |
| 26 | 1.7.2.1 | Create technical analysis | 5d | 2018-10-31 15:00 | 2018-11-07 15:00 | 4 | 88.88d | 0d | GED team | 40h |
| 27 | 1.7.2.2 | Create technical designs | 5d | 2018-11-07 15:00 | 2018-11-14 15:00 | 26 | 88.88d | 0d | GED team | 40h |
| 28 | 1.7.2.3 | Create technical FIT/GAP analysis | 2d | 2018-11-14 15:00 | 2018-11-16 15:00 | 27 | 88.88d | 0d | GED team | 16h |
| 29 | 1.7.2.4 | Presentation technical solution | 2h | 2018-11-16 15:00 | 2018-11-16 17:00 | 28 | 88.88d | 0d | GED team | 2h |
| 30 | 1.7.2.5 | Sign-off technical design specifications | 1d | 2018-11-19 08:00 | 2018-11-19 17:00 | 29 | 88.88d | 0d | GED team | 8h |

| ID | WBS | Task | Duration | Start | Finish | Predecessors | Total slack | Free slack | Constraint | Resources | Work |
| --- | --- | --- | --- | --- | --- | --- | --- | --- | --- | --- | --- |
| 32 | 2 | **GED Content Server 16 environments - Requests& delivery** | 32d | 2018-11-05 15:00 | 2018-12-19 15:00 |  | 0d |  |  |  | 32h |
| 33 | 2.1 | **Requesting** | 2d | 2018-11-05 15:00 | 2018-11-07 15:00 |  | 0d |  |  |  | 32h |
| 34 | 2.1.1 | **Infrastructure** | 1.5d | 2018-11-05 15:00 | 2018-11-07 10:00 |  | 0.5d |  |  |  | 16h |
| 35 | 2.1.1.1 | Order Content Server development environment | 4h | 2018-11-05 15:00 | 2018-11-06 10:00 | 16 | 1.5d |  |  | GED team | 4h |
| 36 | 2.1.1.2 | Order Content Server TST environment | 4h | 2018-11-05 15:00 | 2018-11-06 10:00 | 16 | 0.5d | 0d |  | GED team | 4h |
| 37 | 2.1.1.3 | Order Content Server UAT environment | 4h | 2018-11-06 10:00 | 2018-11-06 15:00 | 36 | 0.5d | 0d |  | GED team | 4h |
| 38 | 2.1.1.4 | Order Content Server Production environment | 4h | 2018-11-06 15:00 | 2018-11-07 10:00 | 37 | 0.5d |  |  | GED team | 4h |
| 39 | 2.1.2 | **Software** | 2d | 2018-11-05 15:00 | 2018-11-07 15:00 |  | 0d |  |  |  | 16h |
| 40 | 2.1.2.1 | Create Software download list (Windows, OpenText, 3rd party) | 4h | 2018-11-05 15:00 | 2018-11-06 10:00 | 16 | 0d |  |  | GED team | 4h |
| 41 | 2.1.2.2 | Download Content Server Software | 4h | 2018-11-06 10:00 | 2018-11-06 15:00 | 40 | 0d |  |  | GED team | 4h |
| 42 | 2.1.2.3 | Download Content Server modules | 4h | 2018-11-06 15:00 | 2018-11-07 10:00 | 41 | 0d |  |  | GED team | 4h |
| 43 | 2.1.2.4 | Download 3rd party software | 4h | 2018-11-07 10:00 | 2018-11-07 15:00 | 42 | 0d |  |  | GED team | 4h |
| 44 | 2.2 | **Delivery** | 30d | 2018-11-07 15:00 | 2018-12-19 15:00 |  | 0d |  |  |  |  |
| 45 | 2.2.1 | Infrastructure - delivery delay time | 30d | 2018-11-07 15:00 | 2018-12-19 15:00 | 33 | 0d |  |  |  |  |
| 47 | 3 | **GED Content Server 16 - Upgrade** | 208.59d | 2018-11-20 08:00 | 2019-09-06 13:45 |  | 0d |  |  |  | 3564h |
| 48 | 3.1 | **Data center operations** | 32.81d | 2018-12-19 15:00 | 2019-02-04 13:30 |  | 0d |  |  |  | 146h |
| 49 | 3.1.1 | Hardware installation | 10d | 2018-12-19 15:00 | 2019-01-02 15:00 | 44 | 0d |  |  | Infra team | 80h |
| 50 | 3.1.2 | Installation virtualisation software | 2d | 2019-01-02 15:00 | 2019-01-04 15:00 | 49 | 0d |  |  | Infra team | 16h |
| 51 | 3.1.3 | Installation Windows operating system on DEV | 1d | 2019-01-04 15:00 | 2019-01-07 15:00 | 49, 50 | 0d |  |  | Infra team | 8h |
| 52 | 3.1.4 | Installation Windows operating system on TST | 1d | 2019-01-11 08:00 | 2019-01-11 17:00 | 49, 50, 51 | 150.97d | 0d | start no earlier than 2019-01-11 08:00 | Infra team | 8h |
| 53 | 3.1.5 | Installation Windows operating system on UAT | 1d | 2019-01-25 08:00 | 2019-01-25 17:00 | 49, 50, 52 | 146.97d | 0d | start no earlier than 2019-01-25 08:00 | Infra team | 8h |
| 54 | 3.1.6 | Installation Windows operating system on PROD | 1d | 2019-02-01 08:00 | 2019-02-01 17:00 | 49, 50, 53 | 142.97d | 0d | start no earlier than 2019-02-01 08:00 | Infra team | 8h |
| 55 | 3.1.7 | Basic OS hardening on DEV (Anti-virus, profiles...) | 4h | 2019-01-07 15:00 | 2019-01-08 10:00 | 51 | 0d |  |  | Infra team | 4h |
| 56 | 3.1.8 | Basic OS hardening on TST (Anti-virus, profiles...) | 4h | 2019-01-14 08:00 | 2019-01-14 12:00 | 52 | 162.97d | 0d |  | Infra team | 4h |
| 57 | 3.1.9 | Basic OS hardening on UAT (Anti-virus, profiles...) | 4h | 2019-01-28 08:00 | 2019-01-28 12:00 | 53 | 152.97d | 0d |  | Infra team | 4h |
| 58 | 3.1.10 | Basic OS hardening on PROD (Anti-virus, profiles...) | 4h | 2019-02-04 08:00 | 2019-02-04 12:00 | 54 | 142.97d | 0d |  | Infra team | 4h |
| 59 | 3.1.11 | Adding user admin user accounts on DEV | 30min | 2019-01-08 10:00 | 2019-01-08 10:30 | 55 | 0d |  |  | IAM team | 0.5h |
| 60 | 3.1.12 | Adding user admin user accounts on TST | 30min | 2019-01-14 13:00 | 2019-01-14 13:30 | 56 | 162.97d | 0d |  | IAM team | 0.5h |
| 61 | 3.1.13 | Adding user admin user accounts on UAT | 30min | 2019-01-28 13:00 | 2019-01-28 13:30 | 57 | 152.97d | 0d |  | IAM team | 0.5h |
| 62 | 3.1.14 | Adding user admin user accounts on PROD | 30min | 2019-02-04 13:00 | 2019-02-04 13:30 | 58 | 142.97d | 0d |  | IAM team | 0.5h |

| ID | WBS | Task | Duration | Start | Finish | Predecessors | Total slack | Free slack | Constraint | Resources | Work |
| --- | --- | --- | --- | --- | --- | --- | --- | --- | --- | --- | --- |
| 63 | 3.2 | **Database operations** | 10d | 2019-01-02 15:00 | 2019-01-16 15:00 |  | 166.84d |  |  |  | 192h |
| 64 | 3.2.1 | Installation Linux operating system & Oracle database for DEV | 2d | 2019-01-02 15:00 | 2019-01-04 15:00 | 49 | 166.84d | 0d |  | Database team | 16h |
| 65 | 3.2.2 | Installation Linux operating system & Oracle database for TST | 2d | 2019-01-04 15:00 | 2019-01-08 15:00 | 64 | 166.84d | 0d |  | Database team | 16h |
| 66 | 3.2.3 | Installation Linux operating system & Oracle database for UAT | 2d | 2019-01-08 15:00 | 2019-01-10 15:00 | 65 | 166.84d | 0d |  | Database team | 16h |
| 67 | 3.2.4 | Installation Linux operating system & Oracle database for PROD | 2d | 2019-01-10 15:00 | 2019-01-14 15:00 | 66 | 166.84d | 0d |  | Database team | 16h |
| 68 | 3.2.5 | Creation Content Server DEV database | 1d | 2019-01-04 15:00 | 2019-01-07 15:00 | 64 | 172.84d | 0d |  | Database team | 8h |
| 69 | 3.2.6 | Creation Content Server TST database | 1d | 2019-01-08 15:00 | 2019-01-09 15:00 | 65 | 170.84d | 0d |  | Database team | 8h |
| 70 | 3.2.7 | Creation Content Server UAT database | 1d | 2019-01-10 15:00 | 2019-01-11 15:00 | 66 | 168.84d | 0d |  | Database team | 8h |
| 71 | 3.2.8 | Creation Content Server PROD database | 1d | 2019-01-14 15:00 | 2019-01-15 15:00 | 67 | 166.84d | 0d |  | Database team | 8h |
| 72 | 3.2.9 | Creation database user for Content Server on DEV database | 1d | 2019-01-07 15:00 | 2019-01-08 15:00 | 68 | 172.84d |  |  | Database team | 8h |
| 73 | 3.2.10 | Creation database user for Content Server on TST database | 1d | 2019-01-09 15:00 | 2019-01-10 15:00 | 69 | 170.84d |  |  | Database team | 8h |
| 74 | 3.2.11 | Creation database user for Content Server on UAT database | 1d | 2019-01-11 15:00 | 2019-01-14 15:00 | 70 | 168.84d |  |  | Database team | 8h |
| 75 | 3.2.12 | Creation database user for Content Server on PROD database | 1d | 2019-01-15 15:00 | 2019-01-16 15:00 | 71 | 166.84d |  |  | Database team | 8h |
| 76 | 3.2.13 | Create backup schema for DEV database | 1d | 2019-01-07 15:00 | 2019-01-08 15:00 | 68 | 172.84d |  |  | Database team | 8h |
| 77 | 3.2.14 | Create backup schema for TST database | 1d | 2019-01-09 15:00 | 2019-01-10 15:00 | 69 | 170.84d |  |  | Database team | 8h |
| 78 | 3.2.15 | Create backup schema for UAT database | 1d | 2019-01-11 15:00 | 2019-01-14 15:00 | 70 | 168.84d |  |  | Database team | 8h |
| 79 | 3.2.16 | Create backup schema for PROD database | 1d | 2019-01-15 15:00 | 2019-01-16 15:00 | 71 | 166.84d |  |  | Database team | 8h |
| 80 | 3.2.17 | Create maintenance scripts for DEV database | 1d | 2019-01-07 15:00 | 2019-01-08 15:00 | 68 | 172.84d |  |  | Database team | 8h |
| 81 | 3.2.18 | Create maintenance scripts for TST database | 1d | 2019-01-09 15:00 | 2019-01-10 15:00 | 69 | 170.84d |  |  | Database team | 8h |
| 82 | 3.2.19 | Create maintenance scripts for UAT database | 1d | 2019-01-11 15:00 | 2019-01-14 15:00 | 70 | 168.84d |  |  | Database team | 8h |
| 83 | 3.2.20 | Create maintenance scripts for PROD database | 1d | 2019-01-15 15:00 | 2019-01-16 15:00 | 71 | 166.84d |  |  | Database team | 8h |
| 84 | 3.3 | **Database data import & Export** | 1.81d | 2019-01-14 08:00 | 2019-01-15 15:30 |  | 167.78d |  |  |  | 21.5h |
| 85 | 3.3.1 | Create additional tablespace for archive audit table | 30min | 2019-01-14 08:00 | 2019-01-14 08:30 |  | 162.78d | 0d | start no earlier than 2019-01-14 08:00 | Database team | 0.5h |
| 86 | 3.3.2 | Export GED PROD database | 2h | 2019-01-14 08:30 | 2019-01-14 10:30 | 85 | 163.91d | 0d | start no earlier than 2019-01-14 08:00 | Database team | 2h |
| 87 | 3.3.3 | Import GED PROD database into new GED PROD database | 2h | 2019-01-14 10:30 | 2019-01-14 13:30 | 86 | 163.91d | 0d |  | Database team | 2h |
| 88 | 3.3.4 | Import GED PROD database into new GED UAT database | 2h | 2019-01-14 08:30 | 2019-01-14 10:30 | 85 | 164.28d |  |  | Database team | 2h |
| 89 | 3.3.5 | Run anonymization script new GED UAT database | 1h | 2019-01-14 13:30 | 2019-01-14 14:30 | 87 | 163.91d |  |  | GED tech team | 1h |
| 90 | 3.3.6 | Modification export script from GED UAT database - reduction data size | 1d | 2019-01-14 08:30 | 2019-01-15 08:30 | 85 | 162.78d | 0d |  | GED tech team | 8h |
| 91 | 3.3.7 | Export new GED UAT database | 2h | 2019-01-15 08:30 | 2019-01-15 10:30 | 90 | 162.78d | 0d |  | Database team | 2h |
| 92 | 3.3.8 | Import into new GED TST database | 2h | 2019-01-15 10:30 | 2019-01-15 13:30 | 91 | 162.78d | 0d |  | Database team | 2h |
| 93 | 3.3.9 | Import into new GED DEV database | 2h | 2019-01-15 13:30 | 2019-01-15 15:30 | 92 | 162.78d |  |  | Database team | 2h |

| ID | WBS | Task | Duration | Start | Finish | Predecessors | Total slack | Free slack | Resources | Work |
| --- | --- | --- | --- | --- | --- | --- | --- | --- | --- | --- |
| 94 | 3.4 | **Releasing environments** | 19.31d | 2019-01-08 10:30 | 2019-02-04 14:00 |  | 0d |  |  | 2h |
| 95 | 3.4.1 | Releasing DEV environment | 30min | 2019-01-08 10:30 | 2019-01-08 11:00 | 51, 55, 59 | 0d |  | Infra team | 0.5h |
| 96 | 3.4.2 | Releasing TST environment | 30min | 2019-01-14 13:30 | 2019-01-14 14:00 | 52, 56, 60 | 157.97d | 0d | Infra team | 0.5h |
| 97 | 3.4.3 | Releasing UAT environment | 30min | 2019-01-28 13:30 | 2019-01-28 14:00 | 53, 57, 61 | 147.97d | 0d | Infra team | 0.5h |
| 98 | 3.4.4 | Releasing PROD environment | 30min | 2019-02-04 13:30 | 2019-02-04 14:00 | 54, 58, 62 | 137.97d | 0d | Infra team | 0.5h |
| 100 | 3.5 | **Installation & non-functional configuration of Content Server** | 29.25d | 2019-01-08 11:00 | 2019-02-18 14:00 |  | 0d |  |  | 200h |
| 101 | 3.5.1 | Install& Config on DEV environment | 5d | 2019-01-08 11:00 | 2019-01-15 11:00 | 95 | 0d |  | GED tech team | 40h |
| 102 | 3.5.2 | Install& Config on TST environment | 5d | 2019-01-14 14:00 | 2019-01-21 14:00 | 96 | 157.97d | 0d | GED tech team | 40h |
| 103 | 3.5.3 | Install& Config on UAT environment | 5d | 2019-01-28 14:00 | 2019-02-04 14:00 | 97 | 147.97d | 0d | GED tech team | 40h |
| 104 | 3.5.4 | Install& Config on PROD environment | 10d | 2019-02-04 14:00 | 2019-02-18 14:00 | 98 | 137.97d | 0d | GED tech team | 80h |
| 105 | 3.6 | **Functional configuration of Content Server** | 25.25d | 2019-01-15 11:00 | 2019-02-19 14:00 |  | 0d |  |  | 32h |
| 106 | 3.6.1 | Config on DEV environment | 1d | 2019-01-15 11:00 | 2019-01-16 11:00 | 101 | 0d |  | GED func team | 8h |
| 107 | 3.6.2 | Config on TST environment | 1d | 2019-01-21 14:00 | 2019-01-22 14:00 | 102 | 157.97d |  | GED func team | 8h |
| 108 | 3.6.3 | Config on UAT environment | 1d | 2019-02-04 14:00 | 2019-02-05 14:00 | 103 | 147.97d |  | GED func team | 8h |
| 109 | 3.6.4 | Config on PROD environment | 1d | 2019-02-18 14:00 | 2019-02-19 14:00 | 104 | 137.97d |  | GED func team | 8h |
| 111 | 3.7 | **Migration GED** | 64d | 2019-01-16 11:00 | 2019-04-16 11:00 |  | 0d |  |  | 531h |
| 112 | 3.7.1 | **Migration GED custom modules** | 64d | 2019-01-16 11:00 | 2019-04-16 11:00 |  | 0d |  |  | 512h |
| 113 | 3.7.1.1 | Migration GED custom modules | 50d | 2019-01-16 11:00 | 2019-03-27 11:00 | 106 | 0d |  | GED tech team | 400h |
| 114 | 3.7.1.2 | GED custom modules package creation | 10d | 2019-03-27 11:00 | 2019-04-10 11:00 | 113 | 0d |  | GED tech team | 80h |
| 115 | 3.7.1.3 | **Deployment GED custom modules** | 4d | 2019-04-10 11:00 | 2019-04-16 11:00 | 114 | 0d |  |  | 32h |
| 116 | 3.7.1.3.1 | Deployment DEV environment | 1d | 2019-04-10 11:00 | 2019-04-11 11:00 | 113 | 0d |  | GED tech team | 8h |
| 117 | 3.7.1.3.2 | Deployment TST environment | 1d | 2019-04-11 11:00 | 2019-04-12 11:00 | 116 | 0d |  | GED tech team | 8h |
| 118 | 3.7.1.3.3 | Deployment UAT environment | 1d | 2019-04-12 11:00 | 2019-04-15 11:00 | 117, 136, 137, 138 | 44d | 0d | GED tech team | 8h |
| 119 | 3.7.1.3.4 | Deployment PROD environment | 1d | 2019-04-15 11:00 | 2019-04-16 11:00 | 118, 139 | 103.22d |  | GED tech team | 8h |

| ID | WBS | Task | Duration | Start | Finish | Predecessors | Total slack | Free slack | Resources | Work |
| --- | --- | --- | --- | --- | --- | --- | --- | --- | --- | --- |
| 120 | 3.7.2 | **Migration process** | 2d | 2019-01-16 11:00 | 2019-01-18 11:00 |  | 165.22d |  |  | 16h |
| 121 | 3.7.2.1 | Connect EFS | 1d | 2019-01-16 11:00 | 2019-01-17 11:00 | 106 | 165.22d | 0d | GED tech team | 8h |
| 122 | 3.7.2.2 | Start database migration | 1d | 2019-01-17 11:00 | 2019-01-18 11:00 | 121 | 165.22d |  | GED tech team | 8h |
| 123 | 3.7.3 | **Directory Service Switch** | 2.06d | 2019-04-11 11:00 | 2019-04-15 11:30 |  | 104.16d |  |  | 1.5h |
| 124 | 3.7.3.1 | Switch DEV directory service to DEV (new) | 30min | 2019-04-11 11:00 | 2019-04-11 11:30 | 116 | 106.16d |  | GED tech team | 0.5h |
| 125 | 3.7.3.2 | Switch DEV directory service to TST (new) | 30min | 2019-04-12 11:00 | 2019-04-12 11:30 | 117 | 105.16d |  | GED tech team | 0.5h |
| 126 | 3.7.3.3 | Switch DEV directory service to UAT (new) | 30min | 2019-04-15 11:00 | 2019-04-15 11:30 | 118 | 104.16d |  | GED tech team | 0.5h |
| 127 | 3.7.4 | **Archive Server Switch** | 2.06d | 2019-04-11 11:00 | 2019-04-15 11:30 |  | 104.16d |  |  | 1.5h |
| 128 | 3.7.4.1 | Switch DEV Archive Server to DEV (new) | 30min | 2019-04-11 11:00 | 2019-04-11 11:30 | 116 | 106.16d |  | GED tech team | 0.5h |
| 129 | 3.7.4.2 | Switch TST Archive Server to TST (new) | 30min | 2019-04-12 11:00 | 2019-04-12 11:30 | 117 | 105.16d |  | GED tech team | 0.5h |
| 130 | 3.7.4.3 | Switch UAT Archive Server to UAT (new) | 30min | 2019-04-15 11:00 | 2019-04-15 11:30 | 118 | 104.16d |  | GED tech team | 0.5h |
| 132 | 3.8 | **GED Content Server - Testing** | 168.75d | 2018-11-20 08:00 | 2019-07-12 15:00 |  | 39.84d |  |  | 1824h |
| 133 | 3.8.1 | Define test framework | 2d | 2018-11-20 08:00 | 2018-11-21 17:00 | 30 | 89.38d | 0d | Test team | 16h |
| 134 | 3.8.2 | Definition test scenario's - business process | 2d | 2018-11-22 08:00 | 2018-11-23 17:00 | 133 | 89.38d | 0d | Test team | 16h |
| 135 | 3.8.3 | **Definition test scenario's - Technical & functional** | 30d | 2018-11-26 08:00 | 2019-01-04 17:00 |  | 94.38d |  |  | 320h |
| 136 | 3.8.3.1 | Creation SIT test cases | 5d | 2018-11-26 08:00 | 2018-11-30 17:00 | 133, 134 | 89.38d | 0d | Test team | 40h |
| 137 | 3.8.3.2 | Creation TUT test cases | 5d | 2018-12-03 08:00 | 2018-12-07 17:00 | 136 | 99.38d | 0d | Test team | 40h |
| 138 | 3.8.3.3 | Creation FUT test cases | 5d | 2018-12-10 08:00 | 2018-12-14 17:00 | 137 | 109.38d | 0d | Test team | 40h |
| 139 | 3.8.3.4 | Creation UAT test cases | 5d | 2018-12-17 08:00 | 2018-12-21 17:00 | 138 | 109.5d | 0d | Test team | 40h |
| 140 | 3.8.3.5 | Creation/review Interface test cases | 5d | 2018-12-24 08:00 | 2018-12-28 17:00 | 139 | 109.5d | 0d | Test team; GED team | 80h |
| 141 | 3.8.3.6 | Creation/review performance test cases | 5d | 2018-12-31 08:00 | 2019-01-04 17:00 | 140 | 114.62d | 65.38d | Test team; GED team | 80h |
| 142 | 3.8.4 | **Test Execution** | 60d | 2019-04-12 11:00 | 2019-07-05 11:00 |  | 0d |  |  | 1088h |
| 143 | 3.8.4.1 | Execution SIT test cases (Execution 2x) | 15d | 2019-04-12 11:00 | 2019-05-03 11:00 | 136, 117 | 0d |  | GED team | 120h |
| 144 | 3.8.4.2 | Execution TUT test cases (Execution 2x) | 15d | 2019-05-03 11:00 | 2019-05-24 11:00 | 137, 117, 143 | 0d |  | GED team | 120h |
| 145 | 3.8.4.3 | Execution FUT test cases (Execution 2x) | 15d | 2019-05-24 11:00 | 2019-06-14 11:00 | 117, 144, 138 | 0d |  | Test team | 120h |
| 146 | 3.8.4.4 | Execution UAT test cases (Execution 2x) | 15d | 2019-06-14 11:00 | 2019-07-05 11:00 | 139, 118, 145 | 0d |  | Test team; End-Users | 240h |

| ID | WBS | Task | Type | Duration | Start | Finish | Predecessors | Total slack | Free slack | Resources | Work |
| --- | --- | --- | --- | --- | --- | --- | --- | --- | --- | --- | --- |
| 147 | 3.8.4.5 | **Execution Interface testing** |  | 20d | 2019-04-12 11:00 | 2019-05-10 11:00 | 140, 117 | 40.12d |  |  | 280h |
| 148 | 3.8.4.5.1 | SIT Phase |  | 20d | 2019-04-12 11:00 | 2019-05-10 11:00 |  | 40.12d |  | Test team | 160h |
| 149 | 3.8.4.5.2 | UAT phase |  | 15d | 2019-04-12 11:00 | 2019-05-03 11:00 |  | 45.12d |  | Test team | 120h |
| 150 | 3.8.4.6 | Executing portal testing |  | 15d | 2019-04-12 11:00 | 2019-05-03 11:00 | 140, 117 | 85.09d | 0d | Test team | 120h |
| 151 | 3.8.4.7 | Executing mobile testing |  | 1d | 2019-05-03 11:00 | 2019-05-06 11:00 | 140, 150 | 89.22d |  | Test team | 8h |
| 152 | 3.8.4.8 | Execution Performance testing |  | 10d | 2019-04-15 11:00 | 2019-04-29 11:00 | 141, 118 | 49.25d |  | Test team | 80h |
| 153 | 3.8.5 | **Validation of test result for Q gate** |  | 45.5d | 2019-05-03 11:00 | 2019-07-05 16:00 |  | 39.72d |  |  | 8h |
| 154 | 3.8.5.1 | Validation SIT test results for Q gate |  | 1h | 2019-05-03 11:00 | 2019-05-03 12:00 | 143 | 44.62d | 0d | Test team | 1h |
| 155 | 3.8.5.2 | Validation TUT test results for Q gate |  | 1h | 2019-05-24 11:00 | 2019-05-24 12:00 | 144, 154 | 29.75d | 0d | Test team | 1h |
| 156 | 3.8.5.3 | Validation FUT test results for Q gate |  | 1h | 2019-06-14 11:00 | 2019-06-14 12:00 | 145, 155 | 14.88d | 0d | Test team | 1h |
| 157 | 3.8.5.4 | Validation UAT test results for Q gate |  | 1h | 2019-07-05 11:00 | 2019-07-05 12:00 | 146, 156 | 0d |  | Test team | 1h |
| 158 | 3.8.5.5 | Validation Interface testing for Q gate |  | 1h | 2019-07-05 13:00 | 2019-07-05 14:00 | 147, 157 | 0d |  | Test team | 1h |
| 159 | 3.8.5.6 | Validation portal testing for Q gate |  | 1h | 2019-07-05 14:00 | 2019-07-05 15:00 | 150, 158 | 39.84d | 0d | Test team | 1h |
| 160 | 3.8.5.7 | Validation Performance testing for Q gate |  | 1h | 2019-07-05 14:00 | 2019-07-05 15:00 | 152, 158 | 0d |  | Test team | 1h |
| 161 | 3.8.5.8 | Readyness meeting - Go/No go for migration | milestone | 1h | 2019-07-05 15:00 | 2019-07-05 16:00 | 160, 154, 155, 156, 157, 158 | 0d |  | Management | 1h |
| 162 | 3.8.6 | **Corrective actions** |  | 50.25d | 2019-05-03 13:00 | 2019-07-12 15:00 |  | 39.84d |  |  | 360h |
| 163 | 3.8.6.1 | Bug corrections after SIT testing |  | 10d | 2019-05-03 13:00 | 2019-05-17 12:00 | 143, 154 | 80.09d |  | GED team | 80h |
| 164 | 3.8.6.2 | Bug corrections after TUT testing |  | 10d | 2019-05-24 13:00 | 2019-06-07 12:00 | 144, 155 | 65.09d |  | GED team | 80h |
| 165 | 3.8.6.3 | Bug corrections after FUT testing |  | 5d | 2019-06-14 13:00 | 2019-06-21 12:00 | 145, 156 | 55.09d |  | GED team | 40h |
| 166 | 3.8.6.4 | Bug corrections after UAT testing |  | 5d | 2019-07-05 13:00 | 2019-07-12 12:00 | 146, 157 | 40.09d |  | GED team | 40h |
| 167 | 3.8.6.5 | Bug correction after Interface testing |  | 5d | 2019-07-05 14:00 | 2019-07-12 14:00 | 147, 158 | 39.97d |  | Interface team | 40h |
| 168 | 3.8.6.6 | Bug correction after portal testing |  | 5d | 2019-07-05 15:00 | 2019-07-12 15:00 | 150, 159 | 39.84d |  | Portal team | 40h |
| 169 | 3.8.6.7 | System improvement tasks after performance testing |  | 5d | 2019-07-05 15:00 | 2019-07-12 15:00 | 152, 160 | 39.84d |  | GED team | 40h |
| 170 | 3.8.7 | **GED Pre-migration** |  | 2d | 2019-07-05 16:00 | 2019-07-09 16:00 |  | 42.72d |  |  | 16h |
| 171 | 3.8.7.1 | Copy production data to new EFS location |  | 1d | 2019-07-05 16:00 | 2019-07-08 16:00 | 161 | 42.72d | 0d | Operations | 8h |
| 172 | 3.8.7.2 | Perform Content Server database validation checks |  | 1d | 2019-07-08 16:00 | 2019-07-09 16:00 | 171 | 42.72d |  | Operations | 8h |

Notes:
- 147: Interfaces testing executed in TST, UAT
- 150: Portal testing executed in TST, UAT

| ID | WBS | Task | Duration | Start | Finish | Predecessors | Total slack | Free slack | Resources | Work |
| --- | --- | --- | --- | --- | --- | --- | --- | --- | --- | --- |
| 174 | 3.9 | **GED Migration Production** | 5.22d | 2019-07-05 11:00 | 2019-07-12 13:45 |  | 0d |  |  | 55.5h |
| 175 | 3.9.1 | **Communication** | 1.75d | 2019-07-05 11:00 | 2019-07-09 09:00 |  | 1.5d |  |  | 6h |
| 176 | 3.9.1.1 | Create upgrade communication | 4h | 2019-07-05 11:00 | 2019-07-05 16:00 | 146 | 4.72d |  | Communication team | 4h |
| 177 | 3.9.1.2 | Publisch communication via GED | 2h | 2019-07-08 16:00 | 2019-07-09 09:00 | 12 | 0d |  | Communication team | 2h |
| 178 | 3.9.2 | **Stop GED environment, monitoring and interfaces** | 0.22d | 2019-07-09 09:00 | 2019-07-09 10:45 |  | 0d |  |  | 1.5h |
| 179 | 3.9.2.1 | Prepare for shutdown timeslot | 15min | 2019-07-09 09:00 | 2019-07-09 09:15 | 177, 161, 12 | 0d |  |  |  |
| 180 | 3.9.2.2 | Close down all internal and external access to GED | 15min | 2019-07-09 09:15 | 2019-07-09 09:30 | 179 | 0d |  | Operations | 0.25h |
| 181 | 3.9.2.3 | Stop all GED monitoring services | 15min | 2019-07-09 09:30 | 2019-07-09 09:45 | 180 | 0d |  | Operations | 0.25h |
| 182 | 3.9.2.4 | Stop all database monitoring on GED databases | 15min | 2019-07-09 09:45 | 2019-07-09 10:00 | 181 | 0d |  | Operations | 0.25h |
| 183 | 3.9.2.5 | Stop all Windows monitoring on GED enviornment | 15min | 2019-07-09 10:00 | 2019-07-09 10:15 | 182 | 0d |  | Operations | 0.25h |
| 184 | 3.9.2.6 | Stop all Interfaces entering data into GED | 15min | 2019-07-09 10:15 | 2019-07-09 10:30 | 183 | 0d |  | Operations | 0.25h |
| 185 | 3.9.2.7 | Stop all GED services on front-end and back-end servers | 15min | 2019-07-09 10:30 | 2019-07-09 10:45 | 184 | 0d |  | Operations | 0.25h |
| 186 | 3.9.3 | **Backup environment** | 1d | 2019-07-09 10:45 | 2019-07-10 10:45 |  | 0d |  |  | 8h |
| 187 | 3.9.3.1 | Perform backup of the complete Content Server in production | 8h | 2019-07-09 10:45 | 2019-07-10 10:45 | 180, 181, 182, 183, 184, 185, 215, 216, 217, 218 | 0d |  | Operations | 8h |
| 188 | 3.9.4 | **Data copy** | 0.25d | 2019-07-10 10:45 | 2019-07-10 13:45 |  | 0d |  |  | 2h |
| 189 | 3.9.4.1 | Copy production database to CS16 database | 2h | 2019-07-10 10:45 | 2019-07-10 13:45 | 187 | 0d |  | Database team | 2h |
| 190 | 3.9.5 | **Start GED new environment** | 2d | 2019-07-10 13:45 | 2019-07-12 13:45 |  | 0d |  |  | 16h |
| 191 | 3.9.5.1 | Start GED database | 1d | 2019-07-10 13:45 | 2019-07-11 13:45 | 189 | 0d |  | GED tech team | 8h |
| 192 | 3.9.5.2 | Start GED services back-end server | 1d | 2019-07-11 13:45 | 2019-07-12 13:45 | 191 | 0d |  | GED tech team | 8h |
| 193 | 3.9.6 | **Migration process** | 0.62d | 2019-07-10 13:45 | 2019-07-11 09:45 |  | 1.38d |  |  | 5h |
| 194 | 3.9.6.1 | Connect EFS | 1h | 2019-07-10 13:45 | 2019-07-10 14:45 | 189 | 1.38d | 0d | GED team | 1h |
| 195 | 3.9.6.2 | Start database migration | 4h | 2019-07-10 14:45 | 2019-07-11 09:45 | 194 | 1.38d |  | GED team | 4h |
| 196 | 3.9.7 | **Switch** | 0.12d | 2019-07-10 10:45 | 2019-07-10 11:45 |  | 1.69d |  |  | 5h |
| 197 | 3.9.7.1 | Switch production Directory Service to new production environment | 30min | 2019-07-10 10:45 | 2019-07-10 11:15 | 187 | 1.69d | 0d | GED team | 0.5h |
| 198 | 3.9.7.2 | Switch production Archive Server to new production environment | 30min | 2019-07-10 10:45 | 2019-07-10 11:15 | 187 | 1.69d | 0d | GED team | 0.5h |
| 199 | 3.9.7.3 | Switch email connection to new production environment | 30min | 2019-07-10 10:45 | 2019-07-10 11:15 | 187 | 1.69d | 0d | GED team | 0.5h |
| 200 | 3.9.7.4 | Switch monitoring system to new production environment | 30min | 2019-07-10 10:45 | 2019-07-10 11:15 | 187 | 1.94d | 0d | Operations | 0.5h |
| 201 | 3.9.7.5 | Switch interfaces to new production environment | 1h | 2019-07-10 10:45 | 2019-07-10 11:45 | 187 | 1.88d | 0d | Interface team | 1h |
| 202 | 3.9.7.6 | Swich portal connections to new production environment | 1h | 2019-07-10 10:45 | 2019-07-10 11:45 | 187 | 1.88d | 0d | Portal team | 1h |
| 203 | 3.9.7.7 | Switch mobile connection to new production environment | 1h | 2019-07-10 10:45 | 2019-07-10 11:45 | 187 | 1.88d | 0d | Mobile team | 1h |

| ID | WBS | Task | Duration | Start | Finish | Predecessors | Total slack | Free slack | Resources | Work |
| --- | --- | --- | --- | --- | --- | --- | --- | --- | --- | --- |
| 204 | 3.9.8 | **Validation & smoke testing** | 0.38d | 2019-07-10 11:15 | 2019-07-10 15:15 |  | 1.69d | 0d |  | 9h |
| 205 | 3.9.8.1 | Validate Directory Service connection, user and groups sync | 1h | 2019-07-10 11:15 | 2019-07-10 13:15 | 197 | 1.69d | 0d | GED team | 1h |
| 206 | 3.9.8.2 | Validate Archive Server connectivity | 1h | 2019-07-10 11:15 | 2019-07-10 13:15 | 198 | 1.69d | 0d | GED team | 1h |
| 207 | 3.9.8.3 | Validate email connection | 1h | 2019-07-10 11:15 | 2019-07-10 13:15 | 199 | 1.69d | 0d | GED team | 1h |
| 208 | 3.9.8.4 | Validate monitoring system is running correcty | 1h | 2019-07-10 11:15 | 2019-07-10 13:15 | 200 | 1.94d |  | Operations | 1h |
| 209 | 3.9.8.5 | Validate that all interfaces are functioning correctly | 1h | 2019-07-10 11:45 | 2019-07-10 13:45 | 201 | 1.88d |  | Interface team | 1h |
| 210 | 3.9.8.6 | Validate that all portals are functioning correctly | 1h | 2019-07-10 11:45 | 2019-07-10 13:45 | 202 | 1.88d |  | Portal team | 1h |
| 211 | 3.9.8.7 | Validate that mobile connection is functioning correctly | 1h | 2019-07-10 11:45 | 2019-07-10 13:45 | 203 | 1.88d |  | Mobile team | 1h |
| 212 | 3.9.8.8 | Execute smoke testing on main functionalities | 2h | 2019-07-10 13:15 | 2019-07-10 15:15 | 205, 206, 207 | 1.69d |  | GED team | 2h |
| 213 | 3.9.9 | Go / No-Go for production | 1h | 2019-07-10 15:15 | 2019-07-10 16:15 | 204 | 1.69d | 0d | PM | 1h |
| 214 | 3.9.10 | **Start GED environment, monitoring and interfaces** | 0.25d | 2019-07-08 16:00 | 2019-07-09 09:00 |  | 0.22d |  |  | 2h |
| 215 | 3.9.10.1 | Start all GED monitoring services | 30min | 2019-07-08 16:00 | 2019-07-08 16:30 | 12 | 0.22d | 0d | Operations | 0.5h |
| 216 | 3.9.10.2 | Start all Windows monitoring on GED enviornment | 30min | 2019-07-08 16:30 | 2019-07-08 17:00 | 215 | 0.22d | 0d | Operations | 0.5h |
| 217 | 3.9.10.3 | Start all Interfaces entering data into GED | 30min | 2019-07-09 08:00 | 2019-07-09 08:30 | 216 | 0.22d | 0d | Operations | 0.5h |
| 218 | 3.9.10.4 | Start all GED services on front-end servers | 30min | 2019-07-09 08:30 | 2019-07-09 09:00 | 217 | 0.22d |  | Operations | 0.5h |
| 219 | 3.10 | **Client upgrade** | 40d | 2019-07-12 13:45 | 2019-09-06 13:45 |  | 0d |  |  |  |
| 220 | 3.10.1 | Creation OpenText Enterprise Connect installation package | 10d | 2019-07-12 13:45 | 2019-07-26 13:45 | 174 | 0d |  |  |  |
| 221 | 3.10.2 | Installation OpenText Enterprise Connect | 30d | 2019-07-26 13:45 | 2019-09-06 13:45 | 220 | 0d |  |  |  |
| 222 | 3.11 | **Hypcare** | 30d | 2019-07-10 16:15 | 2019-08-21 16:15 |  | 11.69d |  |  | 240h |
| 223 | 3.11.1 | Provide hypercare to end-user | 30d | 2019-07-10 16:15 | 2019-08-21 16:15 | 213 | 11.69d |  | GED team | 240h |
| 224 | 3.12 | **Change Management** | 40d | 2018-11-22 09:00 | 2019-01-17 09:00 |  | 166.47d |  |  | 320h |
| 225 | 3.12.1 | Modification end-user manual | 30d | 2018-11-22 09:00 | 2019-01-03 09:00 | 10, 16 | 161.47d | 0d | GED team | 240h |
| 226 | 3.12.2 | end-user (Walk inn's) sessions - What's new in CS16 | 10d | 2019-01-03 09:00 | 2019-01-17 09:00 | 225 | 161.47d |  | GED team | 80h |
